# Создание карты города040(12345)

Schedule from MS Project, 2023-03-01 to 2023-07-21, status date 2023-05-12, costs in р., A marks actual dates.
SPecialiST RePack

## Calendars

- Стандартный: Mon-Fri 09:00-13:00, 14:00-18:00; Sat-Sun off. Exceptions (off unless hours are given): 2023-03-08 (Международный женский день), 2023-05-01 to 2023-05-02 (Праздник Весны и Труда), 2023-05-08 to 2023-05-09 (День Победы), 2023-06-12 (День России).

## Resources

| Resource | Group | Rate | Cost per use | Notes |
| --- | --- | --- | --- | --- |
| Ведущий программист | Программирование | 10 | 100 |  |
| Программист#1 | Программирование | 7 | 50 |  |
| Программист#2 | Программирование | 7 | 50 |  |
| Программист#3 | Программирование | 7 | 50 |  |
| Программист#4 | Программирование | 7 | 50 |  |
| Системный аналитик | Анализ | 20 | 300 |  |
| Художник-дизайнер | Дизайн | 8 | 70 |  |
| Технический писатель | Документация | 5 | 20 |  |
| Web-дизайнер | Internet | 7 | 50 |  |
| 3D аниматор | Дизайн | 8 | 70 |  |
| Мультимедиа-корреспондент | М-медиа | 3 | 20 |  |
| Наборщик данных#1 | Ввод данных | 2 | 10 |  |
| Наборщик данных#2 | Ввод данных | 2 | 10 |  |
| Наборщик данных#3 | Ввод данных | 2 | 10 |  |
| Наборщик данных#4 | Ввод данных | 2 | 10 |  |
| Наборщик данных#5 | Ввод данных | 2 | 10 |  |
| Аренда сервера | Оборудование | 2 |  |  |
| Сервер | Оборудование |  | 3500 | Был приобретен 1 апреля для того, чтобы не пользоваться арендным |
| Учитель |  | 15 |  |  |

## Schedule

| ID | WBS | Task | Type | Duration | Start | Finish | Complete | Remaining | Baseline start | Baseline finish | Baseline duration | Total slack | Free slack | Constraint | Resources | Work | Actual work | Cost | Baseline cost | Actual cost |
| --- | --- | --- | --- | --- | --- | --- | --- | --- | --- | --- | --- | --- | --- | --- | --- | --- | --- | --- | --- | --- |
| 1 | 1 | Начало проекта | milestone | 0w | 2023-03-01 09:00 | 2023-03-01 09:00 |  |  | 2023-03-01 09:00 | 2023-03-01 09:00 |  | 0d |  |  |  |  |  |  |  |  |
| 2 | 2 | **Совещание** |  | 94.12d | 2023-03-01 09:00 A | 2023-07-19 10:00 | 84% | 14.71d | 2023-03-01 09:00 | 2023-07-26 10:00 | 99.12d | 2.59d | 2.22d |  |  | 360h | 290h | 1,880 | 1,281 | 1,270 |
| 3 | 2.1 | Совещание 1 |  | 1h | 2023-03-01 09:00 A | 2023-03-01 10:00 A | 100% |  | 2023-03-01 09:00 | 2023-03-01 10:00 | 1h |  |  | start no earlier than 2023-03-01 09:00 | 3D аниматор; Web-дизайнер; Ведущий программист; Мультимедиа-корреспондент; Системный аналитик; Технический писатель; Художник-дизайнер | 7h | 7h | 61 | 61 | 61 |
| 4 | 2.2 | Совещание 2 |  | 1h | 2023-03-15 09:00 A | 2023-03-15 10:00 A | 100% |  | 2023-03-15 09:00 | 2023-03-15 10:00 | 1h |  |  | start no earlier than 2023-03-15 09:00 | 3D аниматор; Web-дизайнер; Ведущий программист; Мультимедиа-корреспондент; Системный аналитик; Технический писатель; Художник-дизайнер | 7h | 7h | 61 | 61 | 61 |
| 5 | 2.3 | Совещание 3 |  | 1h | 2023-03-22 09:00 A | 2023-03-22 10:00 A | 100% |  | 2023-03-22 09:00 | 2023-03-22 10:00 | 1h |  |  | start no earlier than 2023-03-22 09:00 | 3D аниматор; Web-дизайнер; Ведущий программист; Мультимедиа-корреспондент; Системный аналитик; Технический писатель; Художник-дизайнер | 7h | 7h | 61 | 61 | 61 |
| 6 | 2.4 | Совещание 4 |  | 1h | 2023-03-29 09:00 A | 2023-03-29 10:00 A | 100% |  | 2023-03-29 09:00 | 2023-03-29 10:00 | 1h |  |  | start no earlier than 2023-03-29 09:00 | 3D аниматор; Web-дизайнер; Ведущий программист; Мультимедиа-корреспондент; Системный аналитик; Технический писатель; Художник-дизайнер | 7h | 7h | 61 | 61 | 61 |
| 7 | 2.5 | Совещание 5 |  | 1h | 2023-04-05 09:00 A | 2023-04-05 10:00 A | 100% |  | 2023-04-05 09:00 | 2023-04-05 10:00 | 1h |  |  | start no earlier than 2023-04-05 09:00 | 3D аниматор; Web-дизайнер; Ведущий программист; Мультимедиа-корреспондент; Системный аналитик; Технический писатель; Художник-дизайнер | 7h | 7h | 61 | 61 | 61 |
| 8 | 2.6 | Совещание 6 |  | 1h | 2023-04-12 09:00 A | 2023-04-12 10:00 A | 100% |  | 2023-04-12 09:00 | 2023-04-12 10:00 | 1h |  |  | start no earlier than 2023-04-12 09:00 | 3D аниматор; Web-дизайнер; Ведущий программист; Мультимедиа-корреспондент; Системный аналитик; Технический писатель; Художник-дизайнер | 7h | 7h | 61 | 61 | 61 |
| 9 | 2.7 | Совещание 7 |  | 1h | 2023-04-19 09:00 A | 2023-04-19 10:00 A | 100% |  | 2023-04-19 09:00 | 2023-04-19 10:00 | 1h |  |  | start no earlier than 2023-04-19 09:00 | 3D аниматор; Web-дизайнер; Ведущий программист; Мультимедиа-корреспондент; Системный аналитик; Технический писатель; Художник-дизайнер | 7h | 7h | 61 | 61 | 61 |
| 10 | 2.8 | Совещание 8 |  | 1h | 2023-04-26 09:00 A | 2023-04-26 10:00 A | 100% |  | 2023-04-26 09:00 | 2023-04-26 10:00 | 1h |  |  | start no earlier than 2023-04-26 09:00 | 3D аниматор; Web-дизайнер; Ведущий программист; Мультимедиа-корреспондент; Системный аналитик; Технический писатель; Художник-дизайнер | 7h | 7h | 61 | 61 | 61 |
| 11 | 2.9 | Совещание 9 |  | 1h | 2023-05-03 09:00 A | 2023-05-03 10:00 A | 100% |  | 2023-05-03 09:00 | 2023-05-03 10:00 | 1h |  |  | start no earlier than 2023-05-03 09:00 | 3D аниматор; Web-дизайнер; Ведущий программист; Мультимедиа-корреспондент; Системный аналитик; Технический писатель; Художник-дизайнер | 7h | 7h | 61 | 61 | 61 |
| 12 | 2.10 | Совещание 10 |  | 1h | 2023-05-10 09:00 A | 2023-05-10 10:00 A | 100% |  | 2023-05-10 09:00 | 2023-05-10 10:00 | 1h |  |  | start no earlier than 2023-05-10 09:00 | 3D аниматор; Web-дизайнер; Ведущий программист; Мультимедиа-корреспондент; Системный аналитик; Технический писатель; Художник-дизайнер | 7h | 7h | 61 | 61 | 61 |
| 13 | 2.11 | Совещание 11 |  | 1h | 2023-05-17 09:00 | 2023-05-17 10:00 |  |  | 2023-05-17 09:00 | 2023-05-17 10:00 | 1h | 49.88d | 49.32d | start no earlier than 2023-05-17 09:00 | 3D аниматор; Web-дизайнер; Ведущий программист; Мультимедиа-корреспондент; Системный аналитик; Технический писатель; Художник-дизайнер | 7h |  | 61 | 61 |  |
| 14 | 2.12 | Совещание 12 |  | 1h | 2023-05-24 09:00 | 2023-05-24 10:00 |  |  | 2023-05-24 09:00 | 2023-05-24 10:00 | 1h | 44.88d | 44.32d | start no earlier than 2023-05-24 09:00 | 3D аниматор; Web-дизайнер; Ведущий программист; Мультимедиа-корреспондент; Системный аналитик; Технический писатель; Художник-дизайнер | 7h |  | 61 | 61 |  |
| 15 | 2.13 | Совещание 13 |  | 1h | 2023-05-31 09:00 | 2023-05-31 10:00 |  |  | 2023-05-31 09:00 | 2023-05-31 10:00 | 1h | 39.88d | 39.32d | start no earlier than 2023-05-31 09:00 | 3D аниматор; Web-дизайнер; Ведущий программист; Мультимедиа-корреспондент; Системный аналитик; Технический писатель; Художник-дизайнер | 7h |  | 61 | 61 |  |
| 16 | 2.14 | Совещание 14 |  | 1h | 2023-06-07 09:00 | 2023-06-07 10:00 |  |  | 2023-06-07 09:00 | 2023-06-07 10:00 | 1h | 34.88d | 34.32d | start no earlier than 2023-06-07 09:00 | 3D аниматор; Web-дизайнер; Ведущий программист; Мультимедиа-корреспондент; Системный аналитик; Технический писатель; Художник-дизайнер | 7h |  | 61 | 61 |  |
| 17 | 2.15 | Совещание 15 |  | 1h | 2023-06-14 09:00 | 2023-06-14 10:00 |  |  | 2023-06-14 09:00 | 2023-06-14 10:00 | 1h | 30.88d | 30.32d | start no earlier than 2023-06-14 09:00 | 3D аниматор; Web-дизайнер; Ведущий программист; Мультимедиа-корреспондент; Системный аналитик; Технический писатель; Художник-дизайнер | 7h |  | 61 | 61 |  |
| 18 | 2.16 | Совещание 16 |  | 1h | 2023-06-21 09:00 | 2023-06-21 10:00 |  |  | 2023-06-21 09:00 | 2023-06-21 10:00 | 1h | 25.88d | 25.32d | start no earlier than 2023-06-21 09:00 | 3D аниматор; Web-дизайнер; Ведущий программист; Мультимедиа-корреспондент; Системный аналитик; Технический писатель; Художник-дизайнер | 7h |  | 61 | 61 |  |
| 19 | 2.17 | Совещание 17 |  | 1h | 2023-06-28 09:00 | 2023-06-28 10:00 |  |  | 2023-06-28 09:00 | 2023-06-28 10:00 | 1h | 20.88d | 20.32d | start no earlier than 2023-06-28 09:00 | 3D аниматор; Web-дизайнер; Ведущий программист; Мультимедиа-корреспондент; Системный аналитик; Технический писатель; Художник-дизайнер | 7h |  | 61 | 61 |  |
| 20 | 2.18 | Совещание 18 |  | 1h | 2023-07-05 09:00 | 2023-07-05 10:00 |  |  | 2023-07-05 09:00 | 2023-07-05 10:00 | 1h | 15.88d | 15.32d | start no earlier than 2023-07-05 09:00 | 3D аниматор; Web-дизайнер; Ведущий программист; Мультимедиа-корреспондент; Системный аналитик; Технический писатель; Художник-дизайнер | 7h |  | 61 | 61 |  |
| 21 | 2.19 | Совещание 19 |  | 1h | 2023-07-12 09:00 | 2023-07-12 10:00 |  |  | 2023-07-12 09:00 | 2023-07-12 10:00 | 1h | 10.88d | 10.32d | start no earlier than 2023-07-12 09:00 | 3D аниматор; Web-дизайнер; Ведущий программист; Мультимедиа-корреспондент; Системный аналитик; Технический писатель; Художник-дизайнер | 7h |  | 61 | 61 |  |
| 22 | 2.20 | Совещание 20 |  | 1h | 2023-07-19 09:00 | 2023-07-19 10:00 |  |  | 2023-07-19 09:00 | 2023-07-19 10:00 | 1h | 5.88d | 5.32d | start no earlier than 2023-07-19 09:00 | 3D аниматор; Web-дизайнер; Ведущий программист; Мультимедиа-корреспондент; Системный аналитик; Технический писатель; Художник-дизайнер | 7h |  | 61 | 61 |  |
| 23 | 2.21 | **Повышение квалификации** |  | 10.5d | 2023-04-03 09:00 A | 2023-04-17 13:00 A | 100% |  |  |  |  |  |  |  |  | 220h | 220h | 660 |  | 660 |
| 24 | 2.21.1 | Повышение квалификации 1 |  | 4h | 2023-04-03 09:00 A | 2023-04-03 13:00 A | 100% |  |  |  |  |  |  | start no earlier than 2023-04-03 09:00 | Программист#1; Программист#2; Программист#3; Программист#4; Учитель | 20h | 20h | 60 |  | 60 |
| 25 | 2.21.2 | Повышение квалификации 2 |  | 4h | 2023-04-04 09:00 A | 2023-04-04 13:00 A | 100% |  |  |  |  |  |  | start no earlier than 2023-04-04 09:00 | Программист#1; Программист#2; Программист#3; Программист#4; Учитель | 20h | 20h | 60 |  | 60 |
| 26 | 2.21.3 | Повышение квалификации 3 |  | 4h | 2023-04-05 09:00 A | 2023-04-05 13:00 A | 100% |  |  |  |  |  |  | start no earlier than 2023-04-05 09:00 | Программист#1; Программист#2; Программист#3; Программист#4; Учитель | 20h | 20h | 60 |  | 60 |
| 27 | 2.21.4 | Повышение квалификации 4 |  | 4h | 2023-04-06 09:00 A | 2023-04-06 13:00 A | 100% |  |  |  |  |  |  | start no earlier than 2023-04-06 09:00 | Программист#1; Программист#2; Программист#3; Программист#4; Учитель | 20h | 20h | 60 |  | 60 |
| 28 | 2.21.5 | Повышение квалификации 5 |  | 4h | 2023-04-07 09:00 A | 2023-04-07 13:00 A | 100% |  |  |  |  |  |  | start no earlier than 2023-04-07 09:00 | Программист#1; Программист#2; Программист#3; Программист#4; Учитель | 20h | 20h | 60 |  | 60 |
| 29 | 2.21.6 | Повышение квалификации 6 |  | 4h | 2023-04-10 09:00 A | 2023-04-10 13:00 A | 100% |  |  |  |  |  |  | start no earlier than 2023-04-10 09:00 | Программист#1; Программист#2; Программист#3; Программист#4; Учитель | 20h | 20h | 60 |  | 60 |
| 30 | 2.21.7 | Повышение квалификации 7 |  | 4h | 2023-04-11 09:00 A | 2023-04-11 13:00 A | 100% |  |  |  |  |  |  | start no earlier than 2023-04-11 09:00 | Программист#1; Программист#2; Программист#3; Программист#4; Учитель | 20h | 20h | 60 |  | 60 |
| 31 | 2.21.8 | Повышение квалификации 8 |  | 4h | 2023-04-12 09:00 A | 2023-04-12 13:00 A | 100% |  |  |  |  |  |  | start no earlier than 2023-04-12 09:00 | Программист#1; Программист#2; Программист#3; Программист#4; Учитель | 20h | 20h | 60 |  | 60 |
| 32 | 2.21.9 | Повышение квалификации 9 |  | 4h | 2023-04-13 09:00 A | 2023-04-13 13:00 A | 100% |  |  |  |  |  |  | start no earlier than 2023-04-13 09:00 | Программист#1; Программист#2; Программист#3; Программист#4; Учитель | 20h | 20h | 60 |  | 60 |
| 33 | 2.21.10 | Повышение квалификации 10 |  | 4h | 2023-04-14 09:00 A | 2023-04-14 13:00 A | 100% |  |  |  |  |  |  | start no earlier than 2023-04-14 09:00 | Программист#1; Программист#2; Программист#3; Программист#4; Учитель | 20h | 20h | 60 |  | 60 |
| 34 | 2.21.11 | Повышение квалификации 11 |  | 4h | 2023-04-17 09:00 A | 2023-04-17 13:00 A | 100% |  |  |  |  |  |  | start no earlier than 2023-04-17 09:00 | Программист#1; Программист#2; Программист#3; Программист#4; Учитель | 20h | 20h | 60 |  | 60 |

| ID | WBS | Task | Type | Duration | Start | Finish | Predecessors | Complete | Remaining | Actual start | Baseline start | Baseline finish | Baseline duration | Total slack | Free slack | Constraint | Resources | Work | Actual work | Cost | Baseline cost | Actual cost |
| --- | --- | --- | --- | --- | --- | --- | --- | --- | --- | --- | --- | --- | --- | --- | --- | --- | --- | --- | --- | --- | --- | --- |
| 35 | 3 | **Создание интерфейса** |  | 76.1d | 2023-03-01 10:00 | 2023-06-23 10:46 | 1 | 85% | 11.78d | 2023-03-01 09:00 | 2023-03-01 10:00 | 2023-06-23 10:46 | 76.1d |  |  |  |  | 572.8h | 332.8h | 5,826.14 | 5,600 | 3,754.64 |
| 36 | 3.1 | **Создание дизайна интерфейса** |  | 39.88d | 2023-03-01 10:00 | 2023-04-26 18:00 A |  | 100% |  | 2023-03-01 09:00 | 2023-03-01 10:00 | 2023-04-06 15:00 | 25.5d |  |  |  |  | 332.8h | 332.8h | 2,904.64 | 2,770 | 2,904.64 |
| 37 | 3.1.1 | Разработка 2D графических элементов | manual | 3w | 2023-03-01 10:00 A | 2023-03-23 12:00 A |  | 100% |  |  | 2023-03-01 10:00 | 2023-03-23 12:00 | 3w |  |  | finish no earlier than 2023-03-22 18:00 | Художник-дизайнер [60%] | 120h | 120h | 1,002 | 1,030 | 1,002 |
| 38 | 3.1.2 | Разработка 3D графических элементов |  | 3.4w | 2023-03-01 09:00 A | 2023-04-19 17:18 A | 37SS | 100% |  |  | 2023-03-01 10:00 | 2023-03-16 11:00 | 2w |  |  | start no earlier than 2023-03-01 09:00 | 3D аниматор; Художник-дизайнер [20%] | 88h | 88h | 815 | 710 | 815 |
| 39 | 3.1.3 | Создание заставки | manual | 4.53w | 2023-03-16 09:00 A | 2023-04-26 18:00 A | 38 | 100% |  |  | 2023-03-16 11:00 | 2023-04-06 15:00 | 3w |  |  | finish no earlier than 2023-03-22 18:00 | 3D аниматор; Художник-дизайнер [20%] | 124.8h | 124.8h | 1,087.64 | 1,030 | 1,087.64 |
| 40 | 3.2 | Программирование интерфейса |  | 2w | 2023-06-08 10:18 | 2023-06-23 10:18 | 36, 45 |  |  |  | 2023-06-08 10:46 | 2023-06-23 10:46 | 2w | 1.18d | 0d | finish no earlier than 2023-03-22 18:00 | Программист#3; Программист#4; Программист#1 | 240h |  | 1,921.5 | 1,830 |  |
| 41 | 4 | **Построение базы объектов** |  | 78.31d | 2023-03-23 12:00 A | 2023-07-18 15:27 |  | 23% | 60.19d |  | 2023-03-23 12:00 | 2023-07-18 15:27 | 78.31d | 3.04d |  |  | Аренда сервера; Сервер | 3555.45h | 542h | 13,574 | 15,252.9 | 4,454 |
| 42 | 4.1 | Анализ и построение структуры базы объектов |  | 2w | 2023-03-23 12:00 A | 2023-04-06 15:00 A |  | 100% |  |  | 2023-03-23 12:00 | 2023-04-06 15:00 | 2w |  |  | start no earlier than 2023-03-23 12:00 | Системный аналитик | 80h | 80h | 1,900 | 1,900 | 1,900 |
| 43 | 4.2 | Программирование средств обработки базы объектов |  | 1.61w | 2023-04-06 15:00 A | 2023-04-18 15:27 A | 42 | 100% |  |  | 2023-04-06 15:00 | 2023-04-18 15:27 | 1.61w |  |  | finish no earlier than 2023-03-22 18:00 | Программист#3; Программист#4; Программист#1; Программист#2 | 240h | 240h | 1,880 | 1,880 | 1,880 |
| 44 | 4.3 | Наполнение базы объектов |  | 12w | 2023-04-18 15:27 | 2023-07-18 15:27 | 43 |  |  |  | 2023-04-18 15:27 | 2023-07-18 15:27 | 12w | 3.04d |  | finish no earlier than 2023-05-30 18:00 | Наборщик данных#1; Наборщик данных#2; Наборщик данных#3; Наборщик данных#4; Наборщик данных#5 | 2400h |  | 4,850 | 4,850 |  |
| 45 | 5 | **Создание ядра GIS** |  | 66.16d | 2023-03-01 09:00 A | 2023-06-08 10:18 |  | 48% | 34.28d |  | 2023-03-01 09:00 | 2023-06-08 10:46 | 66.22d | 1.18d | 0d |  |  | 1880h | 680h | 18,567.67 | 18,196.76 | 8,288.6 |
| 46 | 5.1 | Анализ и проектирование ядра |  | 3w | 2023-03-01 09:00 A | 2023-03-23 12:00 A |  | 100% |  |  | 2023-03-01 09:00 | 2023-03-23 12:00 | 3w |  |  | start no earlier than 2023-03-01 09:00 | Ведущий программист; Системный аналитик | 240h | 240h | 4,000 | 4,000 | 4,000 |
| 47 | 5.2 | Создание модели ядра |  | 2.42w | 2023-03-23 12:00 A | 2023-04-19 12:23 A | 46 | 100% |  |  | 2023-03-23 12:00 | 2023-04-19 12:23 | 2.42w |  |  | finish no earlier than 2023-04-05 18:00 | Программист#1; Ведущий программист; Программист#2; Программист#3; Программист#4 | 400h | 400h | 3,304.6 | 3,304.6 | 3,304.6 |
| 48 | 5.3 | Тестирование модели ядра |  | 0.25w | 2023-04-19 12:23 A | 2023-04-20 15:23 A | 47 | 100% |  |  | 2023-04-19 12:23 | 2023-04-20 15:23 | 0.25w |  |  | finish no earlier than 2023-03-07 18:00 | Программист#1; Программист#2; Программист#3; Программист#4 | 40h | 40h | 504 | 480 | 504 |
| 49 | 5.4 | Создание рабочей версии ядра |  | 6.1w | 2023-04-20 15:23 | 2023-06-08 10:18 | 48 |  |  |  | 2023-04-20 15:23 | 2023-06-08 10:46 | 6.11w | 1.18d | 10.18d | finish no earlier than 2023-05-16 18:00 | Ведущий программист; Программист#1; Программист#2; Программист#3; Программист#4 | 1200h |  | 9,759.08 | 9,412.16 |  |
| 50 | 6 | Создание мультимедиа - наполнения |  | 6w | 2023-04-13 09:00 A | 2023-05-31 16:00 | 36 | 60% | 2.4w |  | 2023-04-06 15:00 | 2023-05-25 13:00 | 6w | 35.97d | 35.84d | finish no earlier than 2023-04-12 18:00 | Мультимедиа-корреспондент | 240h | 144h | 740 | 740 | 452 |
| 51 | 7 | Создание справочной системы |  | 2w | 2023-07-04 11:18 | 2023-07-18 14:18 | 40 |  |  |  | 2023-07-04 14:46 | 2023-07-18 16:46 | 2w | 3.18d | 10.18d | finish no earlier than 2023-03-15 18:00 | Технический писатель | 80h |  | 420 | 420 |  |
| 52 | 8 | **Создание руководства пользователя** |  | 17.12d | 2023-06-08 10:18 | 2023-07-04 11:18 | 40FS-10d |  |  |  | 2023-06-08 10:46 | 2023-07-04 14:46 | 17.38d | 13.43d | 13.18d |  |  | 160h |  | 1,010 | 1,010 |  |
| 53 | 8.1 | Разработка дизайна руководства |  | 1w | 2023-06-08 10:18 | 2023-06-21 10:00 |  |  |  |  | 2023-06-08 10:46 | 2023-06-23 12:46 | 1w | 22.59d | 0d | finish no earlier than 2023-03-07 18:00 | Художник-дизайнер | 40h |  | 390 | 390 |  |
| 54 | 8.2 | Написание руководства пользователя |  | 3w | 2023-06-13 10:18 | 2023-07-04 11:18 | 53SS+2d |  |  |  | 2023-06-13 10:46 | 2023-07-04 14:46 | 3w | 13.43d | 0d | finish no earlier than 2023-03-22 18:00 | Технический писатель | 120h |  | 620 | 620 |  |
| 55 | 9 | **Создание web - сайта и поддержка** |  | 21.38d | 2023-06-13 10:18 | 2023-07-12 14:18 |  |  |  |  | 2023-06-13 10:46 | 2023-07-12 16:46 | 21.62d | 0d |  |  |  | 248h |  | 2,106 | 2,106 |  |
| 56 | 9.1 | Разработка структуры сайта |  | 0.2w | 2023-06-13 10:18 | 2023-06-14 10:18 | 54SS |  |  |  | 2023-06-13 10:46 | 2023-06-14 11:46 | 0.2w | 0d |  |  | Web-дизайнер | 8h |  | 106 | 106 |  |
| 57 | 9.2 | Разработка дизайна сайта |  | 1.02w | 2023-06-14 10:18 | 2023-06-21 11:18 | 56 |  |  |  | 2023-06-14 11:46 | 2023-06-21 12:46 | 1w | 0d |  | finish no earlier than 2023-03-15 18:00 | Web-дизайнер; 3D аниматор; Художник-дизайнер | 120h |  | 1,110 | 1,110 |  |
| 58 | 9.3 | Наполнение сайта |  | 3w | 2023-06-21 11:18 | 2023-07-12 14:18 | 57 |  |  |  | 2023-06-21 12:46 | 2023-07-12 16:46 | 3w | 0d |  | finish no earlier than 2023-03-22 18:00 | Web-дизайнер | 120h |  | 890 | 890 |  |
| 59 | 10 | Тестирование сайта |  | 2.44w | 2023-07-05 14:18 | 2023-07-21 15:44 | 55FS-1w |  |  |  | 2023-07-05 16:46 | 2023-07-27 10:02 | 3.06w | 0d |  | finish no earlier than 2023-03-29 18:00 | Ведущий программист; Программист#1; Программист#2; Программист#3; Программист#4 | 480h |  | 4,053.27 | 3,967.77 |  |
| 60 | 11 | Сдача сайта в эксплуатацию | milestone | 0w | 2023-07-21 15:44 | 2023-07-21 15:44 | 59 |  |  |  | 2023-07-27 10:02 | 2023-07-27 10:02 |  | 0d |  |  |  |  |  |  |  |  |
